# fahmy.res

Schedule from MS Project, 2024-10-06 to 2025-03-20, costs in ج.م.‏, A marks actual dates.
CyberSpace
Fahmy Naeem Fahmy / abdelmalak melad

## Calendars

- Standard: Mon-Wed 08:00-12:00, 13:00-17:00; Thu 08:00-11:00, 12:00-14:00; Fri-Sat off; Sun 08:00-11:00, 12:00-14:00.

## Resources

| Resource | Rate | Cost per use |
| --- | --- | --- |
| Software Engineer | 500 | 500 |
| Designers UI/UX | 200 | 500 |
| Frontend Developer Teem | 300 | 500 |
| Backend Developer Teem | 100 | 500 |
| Testers | 250 | 500 |
| Tech Leader | 400 | 500 |
| IT Teams | 200 | 500 |
| Air Conditioning |  | 10000 |
| Servers |  | 20000 |
| Computers |  | 5000 |
| Wires |  | 100 |
| Marketing Fund |  |  |
| routers |  | 600 |
| Data Entry | 200 |  |
| Project Manager | 1000 | 500 |
| Technical Writer | 100 | 500 |
| Database Specialist | 300 | 500 |
| Deployment Engineer | 300 | 500 |
| Risk Manager | 100 | 500 |
| System Analyst | 200 | 500 |
| Storge | 20000 |  |
| Backup Systems | 50000 |  |

## Schedule

| ID | WBS | Task | Duration | Start | Finish | Predecessors | Complete | Remaining | Total slack | Constraint | Resources | Work | Actual work | Cost | Baseline cost | Actual cost |
| --- | --- | --- | --- | --- | --- | --- | --- | --- | --- | --- | --- | --- | --- | --- | --- | --- |
| 1 | 1 | **Restaurant** | 101.83d | 2024-10-06 A | 2025-03-20 |  | 68% | 32.11d | 0d |  |  | 1324.57h | 857.92h | 834,193.34 | 1,062,803 | 405,518.34 |
| 2 | 1.1 | **Requirements Specification** | 5d | 2024-10-06 A | 2024-10-14 A |  | 100% |  |  |  | Project Manager [50%]; System Analyst | 60h | 60h | 28,750 | 28,750 | 28,750 |
| 3 | 1.1.1 | Requirements Gathering | 5d | 2024-10-06 A | 2024-10-14 A |  | 100% |  |  | start no earlier than 2024-10-06 |  |  |  |  |  |  |
| 4 | 1.1.2 | Functional Requirements | 5d | 2024-10-06 A | 2024-10-14 A |  | 100% |  |  | start no earlier than 2024-10-06 |  |  |  |  |  |  |
| 5 | 1.1.3 | Review and Approval | 2d | 2024-10-06 A | 2024-10-08 A | 3SS, 4SS | 100% |  |  |  |  |  |  |  |  |  |
| 6 | 1.2 | **Technology** | 64.83d | 2024-11-11 A | 2025-02-25 | 2 | 78% | 14.28d | 0d |  |  | 883.47h | 607.37h | 273,493.34 | 502,103 | 185,668.34 |
| 7 | 1.2.1 | **SoftWare** | 64.83d | 2024-11-11 A | 2025-02-25 |  | 78% | 14.28d | 0d |  |  | 883.47h | 607.37h | 273,493.34 | 322,153 | 185,668.34 |
| 8 | 1.2.1.1 | **Design** | 13.33d | 2024-11-11 A | 2024-12-02 |  | 99% | 0d | 0d |  | Designers UI/UX | 294.67h | 285.07h | 79,933.33 | 79,133 | 78,013.33 |
| 9 | 1.2.1.1.1 | LOGO | 10d | 2024-11-14 A | 2024-12-02 A | 10 | 100% |  |  |  | Designers UI/UX [40%] | 32h | 32h | 6,600 | 6,600 | 6,600 |
| 10 | 1.2.1.1.2 | **UI/UX Prototypes** | 5d | 2024-11-11 A | 2024-11-18 |  | 99% | 0d | 0d |  | Designers UI/UX [30%] | 12h | 2.4h | 2,550 | 1,750 | 630 |
| 11 | 1.2.1.1.2.1 | **UI** | 3d | 2024-11-11 A | 2024-11-14 A |  | 100% |  |  |  |  |  |  |  |  |  |
| 12 | 1.2.1.1.2.1.1 | Wireframes | 2d | 2024-11-11 A | 2024-11-13 A |  | 100% |  |  |  |  |  |  |  |  |  |
| 13 | 1.2.1.1.2.1.2 | visual element | 2d | 2024-11-11 A | 2024-11-13 A |  | 100% |  |  |  |  |  |  |  |  |  |
| 14 | 1.2.1.1.2.1.3 | Design System | 2d | 2024-11-11 A | 2024-11-13 A |  | 100% |  |  |  |  |  |  |  |  |  |
| 15 | 1.2.1.1.2.1.4 | Design Testing | 3d | 2024-11-11 A | 2024-11-14 A |  | 100% |  |  |  |  |  |  |  |  |  |
| 16 | 1.2.1.1.2.2 | **UX** | 5d | 2024-11-11 A | 2024-11-18 A | 11SS | 100% |  |  |  |  |  |  |  |  |  |
| 17 | 1.2.1.1.2.2.1 | User Research | 4d | 2024-11-11 A | 2024-11-17 A |  | 100% |  |  |  |  |  |  |  |  |  |
| 18 | 1.2.1.1.2.2.2 | UX Design | 3d | 2024-11-11 A | 2024-11-14 A |  | 100% |  |  |  |  |  |  |  |  |  |
| 19 | 1.2.1.1.2.2.3 | Usability Testing | 4d | 2024-11-11 A | 2024-11-17 A |  | 100% |  |  |  |  |  |  |  |  |  |
| 20 | 1.2.1.1.2.2.4 | Data Analysis | 5d | 2024-11-11 A | 2024-11-18 A |  | 100% |  |  |  |  |  |  |  |  |  |
| 21 | 1.2.1.1.3 | System Architecture Design | 10d | 2024-11-14 A | 2024-12-02 A | 10 | 100% |  |  |  | Designers UI/UX [80%] | 64h | 64h | 13,200 | 13,200 | 13,200 |
| 22 | 1.2.1.1.4 | Database Design | 10d | 2024-11-11 A | 2024-11-26 A |  | 100% |  |  |  | Database Specialist [80%] | 64h | 64h | 19,600 | 19,600 | 19,600 |
| 23 | 1.2.1.1.5 | Workflow Design | 6.67d | 2024-11-14 A | 2024-11-26 A | 9SS, 10SS, 21SS, 22SS | 100% |  |  |  | Project Manager [30%] | 16h | 16h | 16,150 | 16,150 | 16,150 |
| 24 | 1.2.1.2 | **Development ( Backend & Frontend )** | 49.5d | 2024-12-02 A | 2025-02-20 | 8 | 70% | 14.85d | 0d |  |  | 580.8h | 322.3h | 190,860 | 240,320 | 107,655 |
| 25 | 1.2.1.2.1 | **Frontend Development** | 12.5d | 2024-12-02 A | 2024-12-23 A |  | 100% |  |  |  |  | 264h | 264h | 88,870 | 88,870 | 88,870 |
| 26 | 1.2.1.2.1.1 | Website | 2.5w | 2024-12-02 A | 2024-12-23 A |  | 100% |  |  |  | Frontend Developer Teem [80%] | 80h | 80h | 24,400 | 24,400 | 24,400 |
| 27 | 1.2.1.2.1.2 | Desktop | 2w | 2024-12-02 A | 2024-12-18 A |  | 100% |  |  |  | Frontend Developer Teem [50%] | 40h | 40h | 12,250 | 12,250 | 12,250 |
| 28 | 1.2.1.2.1.3 | Mobile | 2w | 2024-12-02 A | 2024-12-18 A | 27SS, 26SS | 100% |  |  |  | Frontend Developer Teem [50%] | 40h | 40h | 12,250 | 12,250 | 12,250 |

| ID | WBS | Task | Type | Duration | Start | Finish | Predecessors | Complete | Remaining | Total slack | Resources | Work | Actual work | Cost | Baseline cost | Actual cost |
| --- | --- | --- | --- | --- | --- | --- | --- | --- | --- | --- | --- | --- | --- | --- | --- | --- |
| 29 | 1.2.1.2.1.4 | **Dienste of Features** |  | 5d | 2024-12-02 A | 2024-12-10 A |  | 100% |  |  |  | 104h | 104h | 39,970 | 39,970 | 39,970 |
| 30 | 1.2.1.2.1.4.1 | Menu food |  | 3d | 2024-12-02 A | 2024-12-08 A |  | 100% |  |  | Frontend Developer Teem [20%]; Software Engineer [10%] | 7.2h | 7.2h | 2,790 | 2,790 | 2,790 |
| 31 | 1.2.1.2.1.4.2 | Order online |  | 5d | 2024-12-02 A | 2024-12-10 A |  | 100% |  |  | Frontend Developer Teem [20%]; Tech Leader [10%]; Software Engineer [10%] | 16h | 16h | 6,200 | 6,200 | 6,200 |
| 32 | 1.2.1.2.1.4.3 | Electronic payment |  | 1d | 2024-12-02 A | 2024-12-03 A |  | 100% |  |  | Frontend Developer Teem [10%]; Software Engineer [10%] | 1.6h | 1.6h | 740 | 740 | 740 |
| 33 | 1.2.1.2.1.4.4 | Fast food service |  | 4d | 2024-12-02 A | 2024-12-09 A |  | 100% |  |  | Frontend Developer Teem [20%]; Software Engineer [10%] | 9.6h | 9.6h | 3,670 | 3,670 | 3,670 |
| 34 | 1.2.1.2.1.4.5 | Multi language and currency support |  | 5d | 2024-12-02 A | 2024-12-10 A |  | 100% |  |  | Frontend Developer Teem [20%]; Software Engineer [10%] | 12h | 12h | 4,550 | 4,550 | 4,550 |
| 35 | 1.2.1.2.1.4.6 | Table reservation system |  | 3d | 2024-12-02 A | 2024-12-08 A |  | 100% |  |  | Frontend Developer Teem [20%]; Software Engineer [10%] | 7.2h | 7.2h | 2,790 | 2,790 | 2,790 |
| 36 | 1.2.1.2.1.4.7 | Delivery |  | 4d | 2024-12-02 A | 2024-12-09 A |  | 100% |  |  | Frontend Developer Teem [20%]; Software Engineer [10%] | 9.6h | 9.6h | 3,670 | 3,670 | 3,670 |
| 37 | 1.2.1.2.1.4.8 | customer reviews |  | 4d | 2024-12-02 A | 2024-12-09 A |  | 100% |  |  | Frontend Developer Teem [20%]; Software Engineer [10%] | 9.6h | 9.6h | 3,670 | 3,670 | 3,670 |
| 38 | 1.2.1.2.1.4.9 | Automatic inventory mangement system |  | 5d | 2024-12-02 A | 2024-12-10 A |  | 100% |  |  | Software Engineer [10%]; Frontend Developer Teem [20%] | 12h | 12h | 4,550 | 4,550 | 4,550 |
| 39 | 1.2.1.2.1.4.10 | Track orders |  | 4d | 2024-12-02 A | 2024-12-09 A |  | 100% |  |  | Frontend Developer Teem [20%]; Software Engineer [10%] | 9.6h | 9.6h | 3,670 | 3,670 | 3,670 |
| 40 | 1.2.1.2.1.4.11 | Suggesting meals suitable for the weather |  | 4d | 2024-12-02 A | 2024-12-09 A | 26SS, 27SS, 28SS, 30SS, 31SS, 32SS, 33SS, 34SS, 35SS, 36SS, 37SS, 38SS, 39SS | 100% |  |  | Frontend Developer Teem [20%]; Software Engineer [10%] | 9.6h | 9.6h | 3,670 | 3,670 | 3,670 |
| 41 | 1.2.1.2.2 | **Backend Development** |  | 5d | 2024-12-02 A | 2024-12-10 | 25SS | 99% | 0d | 0d |  | 70.4h | 54.4h | 20,490 | 69,950 | 16,970 |
| 42 | 1.2.1.2.2.1 | **Database Integration** |  | 5d | 2024-12-02 A | 2024-12-10 |  | 99% | 0d | 0d | Database Specialist [20%]; Backend Developer Teem [20%] | 67.2h | 54.4h | 17,880 | 61,700 | 15,320 |
| 43 | 1.2.1.2.2.1.1 | SQL Script |  | 2d | 2024-12-02 A | 2024-12-09 A |  | 100% |  |  | Backend Developer Teem [20%]; Database Specialist [20%]; Software Engineer [10%] | 8h | 8h | 2,330 |  | 2,330 |
| 44 | 1.2.1.2.2.1.2 | Validation |  | 3d | 2024-12-02 A | 2024-12-10 A |  | 100% |  |  | Backend Developer Teem [20%]; Software Engineer [20%]; Database Specialist [10%] | 12h | 12h | 3,850 |  | 3,850 |
| 45 | 1.2.1.2.2.1.3 | Index Manegment |  | 2d | 2024-12-02 A | 2024-12-09 A |  | 100% |  |  | Backend Developer Teem [20%]; Database Specialist [20%]; Software Engineer [10%] | 8h | 8h | 2,330 |  | 2,330 |
| 46 | 1.2.1.2.2.1.4 | Data Mangement |  | 3d | 2024-12-02 A | 2024-12-10 A |  | 100% |  |  | Backend Developer Teem [20%]; Database Specialist [20%]; Software Engineer [10%] | 12h | 12h | 3,370 |  | 3,370 |
| 47 | 1.2.1.2.2.1.5 | Improve Performance | milestone | 0d | 2024-12-02 A | 2024-12-04 A | 43SS, 44SS, 45SS, 46SS | 100% |  |  | Backend Developer Teem [20%]; Database Specialist [20%]; Software Engineer [10%]; Tech Leader [10%] |  |  | 200 |  | 200 |
| 48 | 1.2.1.2.2.2 | **API Devolopment** |  | 3d | 2024-12-02 A | 2024-12-08 |  | 99% | 0d | 0d | Database Specialist [40%]; Backend Developer Teem [80%] | 3.2h |  | 2,010 |  | 1,050 |
| 49 | 1.2.1.2.2.2.1 | Creating API | milestone | 0d | 2024-12-02 A | 2024-12-08 A |  | 100% |  |  | Backend Developer Teem [20%]; Database Specialist [20%]; Software Engineer [10%] |  |  | 150 |  | 150 |
| 50 | 1.2.1.2.2.2.2 | Documentation | milestone | 0d | 2024-12-02 A | 2024-12-04 A |  | 100% |  |  | Backend Developer Teem [20%]; Database Specialist [20%]; Software Engineer [10%] |  |  | 150 |  | 150 |
| 51 | 1.2.1.2.2.2.3 | API Testing | milestone | 0d | 2024-12-02 A | 2024-12-08 A |  | 100% |  |  | Backend Developer Teem [20%]; Software Engineer [10%]; Database Specialist [20%] |  |  | 150 |  | 150 |
| 52 | 1.2.1.2.2.3 | **Performance and Security** |  | 5d | 2024-12-02 A | 2024-12-10 A |  | 100% |  |  | Software Engineer [20%]; Database Specialist [40%] |  |  | 600 |  | 600 |
| 53 | 1.2.1.2.2.3.1 | Security | milestone | 0d | 2024-12-02 A | 2024-12-10 A |  | 100% |  |  | Backend Developer Teem [20%]; Software Engineer [20%]; Tech Leader [20%] |  |  | 200 |  | 200 |
| 54 | 1.2.1.2.2.3.2 | Firewall Setup | milestone | 0d | 2024-12-02 A | 2024-12-10 A | 53SS | 100% |  |  | Tech Leader [20%]; Software Engineer [20%] |  |  | 100 |  | 100 |

| ID | WBS | Task | Duration | Start | Finish | Predecessors | Complete | Remaining | Total slack | Free slack | Constraint | Resources | Work | Actual work | Cost | Baseline cost | Actual cost |
| --- | --- | --- | --- | --- | --- | --- | --- | --- | --- | --- | --- | --- | --- | --- | --- | --- | --- |
| 55 | 1.2.1.2.3 | **Testing** | 37d | 2024-12-23 A | 2025-02-20 | 25, 41 | 1% | 36.46d | 0d |  |  |  | 246.4h | 3.9h | 81,500 | 81,500 | 1,815 |
| 56 | 1.2.1.2.3.1 | Integration Testing | 20d | 2025-01-07 | 2025-02-10 | 57 |  |  | 0d |  |  | Testers [50%]; Frontend Developer Teem [50%]; Software Engineer [50%]; Tech Leader [50%] | 128h |  | 40,200 | 40,200 |  |
| 57 | 1.2.1.2.3.2 | System Testing | 10d | 2024-12-23 A | 2025-01-07 |  | 5% | 9.46d | 0d |  |  | Frontend Developer Teem [20%]; Testers [30%]; Software Engineer [20%]; Tech Leader [20%] | 72h | 3.9h | 25,650 | 25,650 | 1,815 |
| 58 | 1.2.1.2.3.3 | User-Acceptance Testing | 5d | 2025-02-10 | 2025-02-18 | 56 |  |  | 0d |  |  | Frontend Developer Teem [20%]; Testers [20%]; Software Engineer [20%]; Tech Leader [20%] | 32h |  | 12,000 | 12,000 |  |
| 59 | 1.2.1.2.3.4 | Final Report | 2d | 2025-02-18 | 2025-02-20 | 56, 57, 58 |  |  | 0d |  |  | Technical Writer [50%]; Testers [20%]; Software Engineer [20%] | 14.4h |  | 3,650 | 3,650 |  |
| 60 | 1.2.1.3 | **Deployment** | 2d | 2025-02-20 | 2025-02-25 | 24 |  |  | 0d |  |  |  | 8h |  | 2,700 | 2,790 |  |
| 61 | 1.2.1.3.1 | Production Environment Setup | 2d | 2025-02-20 | 2025-02-25 |  |  |  | 0d |  |  | Deployment Engineer [20%] | 3.2h |  | 1,060 | 1,060 |  |
| 62 | 1.2.1.3.2 | Initial Configuration | 1d | 2025-02-20 | 2025-02-24 |  |  |  | 0d |  |  | Deployment Engineer [20%] | 1.6h |  | 580 | 580 |  |
| 63 | 1.2.1.3.3 | Post-Deployment | 2d | 2025-02-20 | 2025-02-25 | 61SS, 62SS |  |  | 0d |  |  | Deployment Engineer [20%] | 3.2h |  | 1,060 | 1,060 |  |
| 64 | 1.3 | **Regular Meeting** | 92.88d | 2024-10-15 A | 2025-03-17 | 2SS | 50% | 46.44d | 3.08d |  |  | Project Manager [50%] | 381.1h | 190.55h | 381,950 | 381,950 | 191,100 |
| 65 | 1.3.1 | Meeting 1 | 1d | 2024-10-15 A | 2024-10-15 A |  | 100% |  |  |  | start no earlier than 2024-10-15 | Project Manager [20%] | 1.6h | 1.6h | 1,700 | 1,700 | 1,700 |
| 66 | 1.3.2 | Meeting 2 | 1d | 2024-11-17 A | 2024-11-18 A | 65 | 100% |  |  |  | start no earlier than 2024-11-17 | Project Manager [20%] | 1.6h | 1.6h | 1,700 | 1,700 | 1,700 |
| 67 | 1.3.3 | Meeting 3 | 1d | 2024-12-18 A | 2024-12-18 A |  | 100% |  |  |  | start no earlier than 2024-12-18 | Project Manager [20%] | 1.6h | 1.6h | 1,700 | 1,700 | 1,700 |
| 68 | 1.3.4 | Meeting4 | 1d | 2025-01-15 | 2025-01-15 | 67 |  |  | 36.71d | 17.62d | start no earlier than 2025-01-15 | Project Manager [20%] | 1.6h |  | 1,700 | 1,700 |  |
| 69 | 1.3.5 | Meeting 5 | 1d | 2025-02-16 | 2025-02-17 | 68 |  |  | 19.08d | 16d | start no earlier than 2025-02-16 | Project Manager [20%] | 1.6h |  | 1,700 | 1,700 |  |
| 70 | 1.3.6 | Meeting 6 | 1d | 2025-03-16 | 2025-03-17 | 69 |  |  | 3.08d |  | start no earlier than 2025-03-16 | Project Manager [20%] | 1.6h |  | 1,700 | 1,700 |  |
| 71 | 1.4 | **Advertising and publicity** | 15d | 2025-02-25 | 2025-03-20 | 6 |  |  | 0d |  |  |  |  |  | 150,000 | 150,000 |  |
| 72 | 1.4.1 | Ads | 15d | 2025-02-25 | 2025-03-20 |  |  |  | 0d |  |  | Marketing Fund [0.1%] |  |  | 75,000 | 75,000 |  |
| 73 | 1.4.2 | Facbook | 15d | 2025-02-25 | 2025-03-20 | 72SS |  |  | 0d |  |  | Marketing Fund [0.1%] |  |  | 75,000 | 75,000 |  |

Notes:
- 64: Resource delay / high cost / contingency plans
